# MealMate alfa

How a schedule from MS Project changed from version to version. A marks actual dates.

## Version 1 (saved 2023-01-17)

Note of the change: GANTT

| ID | WBS | Task | Duration | Start | Finish | Total float |
| --- | --- | --- | --- | --- | --- | --- |
| 1 | 1 | **Project management** | 1d | 2023-01-17 | 2023-01-17 | 0d |
| 2 |  | Project scope statement | 1d? | 2023-01-17 | 2023-01-17 |  |
| 3 |  | WBS | 1d? | 2023-01-17 | 2023-01-17 |  |
| 4 |  | Approved project management plan | 1d? | 2023-01-17 | 2023-01-17 |  |
| 5 | 2 | **Requirements** | 1d | 2023-01-17 | 2023-01-17 | 0d |
| 6 |  | Software architecture document | 1d? | 2023-01-17 | 2023-01-17 |  |
| 7 | 2.2 | **UI Design** | 1d | 2023-01-17 | 2023-01-17 | 0d |
| 8 |  | Style definition | 1d? | 2023-01-17 | 2023-01-17 |  |
| 9 |  | Mobile app design | 1d? | 2023-01-17 | 2023-01-17 |  |
| 10 | 3 | **Infrastructure** | 1d | 2023-01-17 | 2023-01-17 | 0d |
| 11 |  | Infrastructure specification | 1d? | 2023-01-17 | 2023-01-17 |  |
| 12 |  | Infrastructure cost prediction | 1d? | 2023-01-17 | 2023-01-17 |  |
| 13 | 4 | **Back-end** | 1d | 2023-01-17 | 2023-01-17 | 0d |
| 14 |  | Media database | 1d? | 2023-01-17 | 2023-01-17 |  |
| 15 |  | Client-management system | 1d? | 2023-01-17 | 2023-01-17 |  |
| 16 |  | Authentication provider | 1d? | 2023-01-17 | 2023-01-17 |  |
| 17 |  | Application logic implementation | 1d? | 2023-01-17 | 2023-01-17 |  |
| 18 | 5 | **Front-end** | 1d | 2023-01-17 | 2023-01-17 | 0d |
| 19 |  | Home page | 1d? | 2023-01-17 | 2023-01-17 |  |
| 20 |  | Login page | 1d? | 2023-01-17 | 2023-01-17 |  |
| 21 |  | Main page | 1d? | 2023-01-17 | 2023-01-17 |  |
| 22 | 6 | **Test** | 1d | 2023-01-17 | 2023-01-17 | 0d |
| 23 |  | Test GUI | 1d? | 2023-01-17 | 2023-01-17 |  |
| 24 |  | Test App | 1d? | 2023-01-17 | 2023-01-17 |  |
| 25 | 7 | **Deployment** | 1d | 2023-01-17 | 2023-01-17 | 0d |
| 26 |  | Consegna ai prof. | 1d? | 2023-01-17 | 2023-01-17 |  |
| 27 |  | Pubblicazione su Appstore | 1d? | 2023-01-17 | 2023-01-17 |  |

## Version 2 (saved 2023-01-22)

Note of the change: Aggiunte precedenze nel gantt

Last finish 2023-01-17 → 2023-04-21 (+94d).

Changed:

| ID | Task | Start | Finish | Duration | Total float | Predecessors |
| --- | --- | --- | --- | --- | --- | --- |
| 1 | **Project management** |  | 2023-01-17 → 2023-01-18 (+1d) | 1d → 2d? |  |  |
| 4 | Approved project management plan | 2023-01-17 → 2023-01-18 (+1d) | 2023-01-17 → 2023-01-18 (+1d) |  |  | none → 2, 3 |
| 5 | **Requirements** | 2023-01-17 → 2023-01-19 (+2d) | 2023-01-17 → 2023-01-23 (+6d) | 1d → 3d? |  |  |
| 6 | Software architecture document | 2023-01-17 → 2023-01-19 (+2d) | 2023-01-17 → 2023-01-19 (+2d) |  |  | none → 1 |
| 7 | **UI Design** | 2023-01-17 → 2023-01-20 (+3d) | 2023-01-17 → 2023-01-23 (+6d) | 1d → 2d? |  |  |
| 8 | Style definition | 2023-01-17 → 2023-01-20 (+3d) | 2023-01-17 → 2023-01-20 (+3d) |  |  | none → 6 |
| 9 | Mobile app design | 2023-01-17 → 2023-01-23 (+6d) | 2023-01-17 → 2023-01-23 (+6d) |  |  | none → 8 |
| 10 | **Infrastructure** | 2023-01-17 → 2023-01-20 (+3d) | 2023-01-17 → 2023-01-23 (+6d) | 1d → 2d? |  |  |
| 11 | Infrastructure specification | 2023-01-17 → 2023-01-20 (+3d) | 2023-01-17 → 2023-01-20 (+3d) |  |  | none → 6 |
| 12 | Infrastructure cost prediction | 2023-01-17 → 2023-01-23 (+6d) | 2023-01-17 → 2023-01-23 (+6d) |  |  | none → 11 |
| 13 | **Back-end** | 2023-01-17 → 2023-01-24 (+7d) | 2023-01-17 → 2023-01-25 (+8d) | 1d → 2d? |  |  |
| 14 | Media database | 2023-01-17 → 2023-01-24 (+7d) | 2023-01-17 → 2023-01-24 (+7d) |  |  | none → 10 |
| 15 | Client-management system | 2023-01-17 → 2023-01-24 (+7d) | 2023-01-17 → 2023-01-24 (+7d) |  |  | none → 10 |
| 16 | Authentication provider | 2023-01-17 → 2023-01-24 (+7d) | 2023-01-17 → 2023-01-24 (+7d) |  |  | none → 10 |
| 17 | Application logic implementation | 2023-01-17 → 2023-01-25 (+8d) | 2023-01-17 → 2023-01-25 (+8d) |  |  | none → 14, 15, 16 |
| 18 | **Front-end** | 2023-01-17 → 2023-01-24 (+7d) | 2023-01-17 → 2023-01-24 (+7d) | 1d → 1d? |  |  |
| 19 | Home page | 2023-01-17 → 2023-01-24 (+7d) | 2023-01-17 → 2023-01-24 (+7d) |  |  | none → 10 |
| 20 | Login page | 2023-01-17 → 2023-01-24 (+7d) | 2023-01-17 → 2023-01-24 (+7d) |  |  | none → 10 |
| 21 | Main page | 2023-01-17 → 2023-01-24 (+7d) | 2023-01-17 → 2023-01-24 (+7d) |  |  | none → 10 |
| 22 | **Test** | 2023-01-17 → 2023-01-26 (+9d) | 2023-01-17 → 2023-01-26 (+9d) | 1d → 1d? |  |  |
| 23 | Test GUI | 2023-01-17 → 2023-01-26 (+9d) | 2023-01-17 → 2023-01-26 (+9d) |  |  | none → 18 |
| 24 | Test App | 2023-01-17 → 2023-01-26 (+9d) | 2023-01-17 → 2023-01-26 (+9d) |  |  | none → 13, 18 |
| 25 | **Deployment** | 2023-01-17 → 2023-01-26 (+9d) | 2023-01-17 → 2023-04-21 (+94d) | 1d → 62d | 0d → none | none → 22 |
| 26 | Consegna ai prof. | 2023-01-17 → 2023-01-26 (+9d) | 2023-01-17 → 2023-01-26 (+9d) |  |  |  |
| 27 | Pubblicazione su Appstore | 2023-01-17 → 2023-01-26 (+9d) | 2023-01-17 → 2023-01-26 (+9d) |  |  |  |

## Version 3 (saved 2023-01-27)

Note of the change: Updated Gantt 01/27/2023-10:39

Last finish 2023-04-21 → 2023-05-25 (+34d).

Changed:

| ID | Task | Start | Finish | Duration | Total float |
| --- | --- | --- | --- | --- | --- |
| 1 | **Project management** | 2023-01-17 → 2022-12-22 (-26d) | 2023-01-18 → 2023-01-23 (+5d) | 2d? → 23d | 0d → none |
| 2 | Project scope statement | 2023-01-17 → 2022-12-22 (-26d) | 2023-01-17 → 2022-12-22 (-26d) |  | none → 77d |
| 3 | WBS | 2023-01-17 → 2022-12-22 (-26d) | 2023-01-17 → 2022-12-22 (-26d) |  | none → 77d |
| 4 | Approved project management plan | 2023-01-18 → 2022-12-23 (-26d) | 2023-01-18 → 2022-12-23 (-26d) |  | none → 77d |
| 5 | **Requirements** | 2023-01-19 → 2023-01-23 (+4d) | 2023-01-23 → 2023-02-23 (+31d) | 3d? → 24d | 0d → none |
| 6 | Software architecture document | 2023-01-19 → 2023-01-24 (+5d) | 2023-01-19 → 2023-01-24 (+5d) |  | none → 56d |
| 7 | **UI Design** |  | 2023-01-23 → 2023-02-08 (+16d) | 2d? → 14d | 0d → none |
| 8 | Style definition | 2023-01-20 → 2023-01-25 (+5d) | 2023-01-20 → 2023-01-25 (+5d) |  | none → 85d |
| 9 | Mobile app design | 2023-01-23 → 2023-01-26 (+3d) | 2023-01-23 → 2023-01-26 (+3d) |  | none → 85d |
| 10 | **Infrastructure** | 2023-01-20 → 2023-02-08 (+19d) | 2023-01-23 → 2023-02-23 (+31d) | 2d? → 12d | 0d → none |
| 11 | Infrastructure specification | 2023-01-20 → 2023-02-08 (+19d) | 2023-01-20 → 2023-02-08 (+19d) |  | none → 46d |
| 12 | Infrastructure cost prediction | 2023-01-23 → 2023-02-09 (+17d) | 2023-01-23 → 2023-02-09 (+17d) |  | none → 46d |
| 13 | **Back-end** | 2023-01-24 → 2023-02-23 (+30d) | 2023-01-25 → 2023-03-23 (+57d) | 2d? → 21d | 0d → none |
| 14 | Media database | 2023-01-24 → 2023-02-24 (+31d) | 2023-01-24 → 2023-02-24 (+31d) |  | none → 36d |
| 15 | Client-management system | 2023-01-24 → 2023-02-24 (+31d) | 2023-01-24 → 2023-02-24 (+31d) |  | none → 36d |
| 16 | Authentication provider | 2023-01-24 → 2023-02-24 (+31d) | 2023-01-24 → 2023-02-24 (+31d) |  | none → 36d |
| 17 | Application logic implementation | 2023-01-25 → 2023-02-27 (+33d) | 2023-01-25 → 2023-02-27 (+33d) |  | none → 36d |
| 18 | **Front-end** | 2023-01-24 → 2023-02-23 (+30d) | 2023-01-24 → 2023-03-23 (+58d) | 1d? → 21d | 0d → none |
| 19 | Home page | 2023-01-24 → 2023-02-24 (+31d) | 2023-01-24 → 2023-02-24 (+31d) |  | none → 37d |
| 20 | Login page | 2023-01-24 → 2023-02-24 (+31d) | 2023-01-24 → 2023-02-24 (+31d) |  | none → 37d |
| 21 | Main page | 2023-01-24 → 2023-02-24 (+31d) | 2023-01-24 → 2023-02-24 (+31d) |  | none → 37d |
| 22 | **Test** | 2023-01-26 → 2023-03-23 (+56d) | 2023-01-26 → 2023-04-20 (+84d) | 1d? → 21d | 0d → none |
| 23 | Test GUI | 2023-01-26 → 2023-03-24 (+57d) | 2023-01-26 → 2023-03-24 (+57d) |  | none → 18d |
| 24 | Test App | 2023-01-26 → 2023-03-24 (+57d) | 2023-01-26 → 2023-03-24 (+57d) |  | none → 18d |
| 25 | **Deployment** | 2023-01-26 → 2023-04-20 (+84d) | 2023-04-21 → 2023-05-25 (+34d) | 62d → 26d |  |
| 26 | Consegna ai prof. | 2023-01-26 → 2023-04-20 (+84d) | 2023-01-26 → 2023-04-20 (+84d) |  |  |
| 27 | Pubblicazione su Appstore | 2023-01-26 → 2023-04-20 (+84d) | 2023-01-26 → 2023-04-20 (+84d) |  |  |

## Version 4 (saved 2023-02-21)

Note of the change: Update MealMate-Gantt.mpp Material 02/21/2023-09:39

Last finish stays 2023-05-25.

Changed:

| ID | Task | Start | Finish | Duration | Total float | Predecessors | Other |
| --- | --- | --- | --- | --- | --- | --- | --- |
| 1 | **Project management** |  |  |  |  |  | resources none → Concil Tania; D'Ambrosi Daniele |
| 5 | **Requirements** | 2023-01-23 → 2023-01-24 (+1d) | 2023-02-23 → 2023-01-26 (-28d) | 24d → 3d? | none → 56d | none → 1 | resources none → Concil Tania; D'Ambrosi Daniele |
| 7 | **UI Design** | 2023-01-20 → 2023-01-25 (+5d) | 2023-02-08 → 2023-01-26 (-13d) | 14d → 2d? | none → 85d |  | resources none → Concil Tania |
| 10 | **Infrastructure** |  |  |  |  |  | resources none → Guerra Andrea |
| 13 | **Back-end** |  |  |  |  |  | resources none → D'Ambrosi Daniele; Guerra Andrea |
| 18 | **Front-end** |  |  |  |  |  | resources none → Bianchi Matteo; Concil Tania |
| 22 | **Test** |  |  |  |  |  | resources none → D'Ambrosi Daniele |
| 25 | **Deployment** |  |  |  |  |  | resources none → D'Ambrosi Daniele |

## Version 5 (saved 2023-04-21)

Note of the change: Presentation Updated - 05/15/2023 - 20:15

Last finish 2023-05-25 → 2023-05-30 (+5d).

Changed:

| ID | Task | Start | Finish | Duration | Total float | Other |
| --- | --- | --- | --- | --- | --- | --- |
| 5 | **Requirements** |  |  |  | 56d → 84d | resources Concil Tania; D'Ambrosi Daniele → D'Ambrosi Daniele |
| 13 | **Back-end** | 2023-02-23 → 2023-04-21 (+57d) | 2023-03-23 → 2023-05-19 (+57d) |  |  |  |
| 14 | Media database | 2023-02-24 → 2023-04-21 (+56d) | 2023-02-24 → 2023-04-21 (+56d) |  | 36d → 24d |  |
| 15 | Client-management system | 2023-02-24 → 2023-04-21 (+56d) | 2023-02-24 → 2023-04-21 (+56d) |  | 36d → 24d |  |
| 16 | Authentication provider | 2023-02-24 → 2023-04-21 (+56d) | 2023-02-24 → 2023-04-21 (+56d) |  | 36d → 24d |  |
| 17 | Application logic implementation | 2023-02-27 → 2023-04-24 (+56d) | 2023-02-27 → 2023-04-24 (+56d) |  | 36d → 24d |  |
| 18 | **Front-end** |  | 2023-03-23 → 2023-04-28 (+36d) | 21d → 47d |  |  |
| 22 | **Test** | 2023-03-23 → 2023-05-22 (+60d) | 2023-04-20 → 2023-05-29 (+39d) | 21d → 6d |  |  |
| 23 | Test GUI | 2023-03-24 → 2023-05-22 (+59d) | 2023-03-24 → 2023-05-22 (+59d) |  | 18d → 5d |  |
| 24 | Test App | 2023-03-24 → 2023-05-22 (+59d) | 2023-03-24 → 2023-05-22 (+59d) |  | 18d → 5d |  |
| 25 | **Deployment** | 2023-04-20 → 2023-05-30 (+40d) | 2023-05-25 → 2023-05-30 (+5d) | 26d → 1d |  |  |
| 26 | Consegna ai prof. | 2023-04-20 → 2023-05-30 (+40d) | 2023-04-20 → 2023-05-30 (+40d) |  |  |  |
| 27 | Pubblicazione su Appstore | 2023-04-20 → 2023-05-30 (+40d) | 2023-04-20 → 2023-05-30 (+40d) |  |  |  |

## Version 6 (saved 2023-05-23)

Note of the change: Update MealMate-Gantt.mpp

Last finish 2023-05-30 → 2023-05-26 (-4d).

Changed:

| ID | Task | Start | Finish | Duration | Total float | Predecessors | Other |
| --- | --- | --- | --- | --- | --- | --- | --- |
| 1 | **Project management** | 2022-12-22 → 2023-01-17 (+26d) | 2023-01-23 → 2023-01-31 (+8d) | 23d → 11d | none → 0d |  | resources Concil Tania; D'Ambrosi Daniele → none |
| 2 | Project scope statement | 2022-12-22 → 2023-01-17 (+26d) | 2022-12-22 → 2023-01-23 (+32d) | 1d? → 5d | 105d → none |  | resources none → Concil Tania; D'Ambrosi Daniele |
| 3 | WBS | 2022-12-22 → 2023-01-24 (+33d) | 2022-12-22 → 2023-01-30 (+39d) | 1d? → 5d | 77d → none | none → 2 | resources none → Concil Tania; D'Ambrosi Daniele |
| 4 | Approved project management plan | 2022-12-23 → 2023-01-31 (+39d) | 2022-12-23 → 2023-01-31 (+39d) | 1d? → 1d | 105d → none | 2, 3 → 3 | resources none → Concil Tania; D'Ambrosi Daniele |
| 5 | **Requirements** | 2023-01-24 → 2023-02-01 (+8d) | 2023-01-26 → 2023-02-24 (+29d) | 3d? → 18d | 84d → -13d |  | resources D'Ambrosi Daniele → none |
| 6 | Software architecture document | 2023-01-24 → 2023-02-01 (+8d) | 2023-01-24 → 2023-02-01 (+8d) | 1d? → 1d | 84d → none | 1 → none | resources none → D'Ambrosi Daniele |
| 7 | **UI Design** | 2023-01-25 → 2023-02-02 (+8d) | 2023-01-26 → 2023-02-24 (+29d) | 2d? → 17d | 88d → -13d | none → 1 | resources Concil Tania → none |
| 8 | Style definition | 2023-01-25 → 2023-02-02 (+8d) | 2023-01-25 → 2023-02-10 (+16d) | 1d? → 7d | 88d → -13d |  | resources none → Concil Tania |
| 9 | Mobile app design | 2023-01-26 → 2023-02-13 (+18d) | 2023-01-26 → 2023-02-24 (+29d) | 1d? → 10d | 88d → -13d |  | resources none → Concil Tania |
| 10 | **Infrastructure** |  |  |  | none → 0d | none → 5 | resources Guerra Andrea → none |
| 11 | Infrastructure specification |  | 2023-02-08 → 2023-02-14 (+6d) | 1d? → 5d | 46d → none |  | resources none → Guerra Andrea |
| 12 | Infrastructure cost prediction | 2023-02-09 → 2023-02-15 (+6d) | 2023-02-09 → 2023-02-23 (+14d) | 1d? → 7d | 74d → none |  | resources none → Guerra Andrea |
| 13 | **Back-end** | 2023-04-21 → 2023-02-24 (-56d) | 2023-05-19 → 2023-05-12 (-7d) | 21d → 56d | none → 0d | none → 10 | resources D'Ambrosi Daniele; Guerra Andrea → none |
| 14 | Media database | 2023-04-21 → 2023-02-24 (-56d) | 2023-04-21 → 2023-03-15 (-37d) | 1d? → 14d | 24d → none | 10 → none | resources none → D'Ambrosi Daniele; Guerra Andrea |
| 15 | Client-management system | 2023-04-21 → 2023-03-16 (-36d) | 2023-04-21 → 2023-04-04 (-17d) | 1d? → 14d | 24d → none | 10 → 14 | resources none → D'Ambrosi Daniele; Guerra Andrea |
| 16 | Authentication provider | 2023-04-21 → 2023-04-05 (-16d) | 2023-04-21 → 2023-04-24 (+3d) | 1d? → 14d | 24d → none | 10 → 15 | resources none → D'Ambrosi Daniele; Guerra Andrea |
| 17 | Application logic implementation | 2023-04-24 → 2023-04-25 (+1d) | 2023-04-24 → 2023-05-12 (+18d) | 1d? → 14d | 24d → none | 14, 15, 16 → 16 | resources none → D'Ambrosi Daniele; Guerra Andrea |
| 18 | **Front-end** | 2023-02-23 → 2023-02-27 (+4d) |  | 47d → 45d | none → 0d | none → 5 | resources Bianchi Matteo; Concil Tania → none |
| 19 | Home page | 2023-02-24 → 2023-02-27 (+3d) | 2023-02-24 → 2023-03-17 (+21d) | 1d? → 15d | 65d → none |  | resources none → Bianchi Matteo; Concil Tania |
| 20 | Login page | 2023-02-24 → 2023-03-20 (+24d) | 2023-02-24 → 2023-03-31 (+35d) | 1d? → 10d | 65d → none | 10 → 10, 19 | resources none → Bianchi Matteo; Concil Tania |
| 21 | Main page | 2023-02-24 → 2023-04-03 (+38d) | 2023-02-24 → 2023-04-28 (+63d) | 1d? → 20d | 65d → none | 10 → 10, 19, 20 | resources none → Bianchi Matteo; Concil Tania |
| 22 | **Test** | 2023-05-22 → 2023-05-15 (-7d) | 2023-05-29 → 2023-05-24 (-5d) | 6d → 8d | none → 0d |  | resources D'Ambrosi Daniele → none |
| 23 | Test GUI | 2023-05-22 → 2023-05-15 (-7d) | 2023-05-22 → 2023-05-16 (-6d) | 1d? → 2d | 5d → none | 18 → 13, 18 | resources none → D'Ambrosi Daniele |
| 24 | Test App | 2023-05-22 → 2023-05-17 (-5d) | 2023-05-22 → 2023-05-24 (+2d) | 1d? → 6d | 5d → none | 13, 18 → 23 | resources none → D'Ambrosi Daniele |
| 25 | **Deployment** | 2023-05-30 → 2023-05-25 (-5d) | 2023-05-30 → 2023-05-26 (-4d) | 1d → 2d | none → 0d | 22 → none | resources D'Ambrosi Daniele → none |
| 26 | Consegna ai prof. | 2023-05-30 → 2023-05-25 (-5d) | 2023-05-30 → 2023-05-25 (-5d) | 1d? → 1d |  | none → 22 | resources none → D'Ambrosi Daniele |
| 27 | Pubblicazione su Appstore | 2023-05-30 → 2023-05-26 (-4d) | 2023-05-30 → 2023-05-26 (-4d) | 1d? → 1d |  | none → 26 | resources none → D'Ambrosi Daniele |
